# ProjectPrac

Schedule from MS Project, 2028-06-12 to 2028-08-07, status date 2028-06-16, costs in $, A marks actual dates.

## Calendars

- Standard: Mon-Fri 08:00-12:00, 13:00-17:00; Sat-Sun off. Exceptions (off unless hours are given): 2028-07-03 to 2028-07-04 (U.S. Independence Day).

## Resources

| Resource | Unit | Rate |
| --- | --- | --- |
| Lead physician |  | 200 |
| Construction team |  | 100 |
| Lead technician |  | 150 |
| Cable | Each | 80 |
| Permit |  |  |
| Hospital procurement |  | 125 |
| Logistics |  |  |
| MRI vendor |  |  |
| Lead sheet | Sq ft | 50 |
| Travel |  |  |
| Building inspector |  |  |

## Schedule

| ID | WBS | Task | Type | Duration | Start | Finish | Predecessors | Complete | Baseline start | Baseline finish | Baseline duration | Total slack | Resources | Work | Actual work | Cost | Baseline cost | Actual cost |
| --- | --- | --- | --- | --- | --- | --- | --- | --- | --- | --- | --- | --- | --- | --- | --- | --- | --- | --- |
| 1 | 1 | **Procurement** |  | 14d | 2028-06-12 A | 2028-06-29 A |  | 100% | 2028-06-12 | 2028-06-23 | 10d |  |  | 128h | 128h | 14,200 | 9,000 | 14,200 |
| 2 | 1.1 | Review lab design |  | 1d | 2028-06-12 A | 2028-06-12 A |  | 100% | 2028-06-12 | 2028-06-12 | 1d |  | Construction team; Lead physician | 16h | 16h | 2,400 | 2,400 | 2,400 |
| 3 | 1.2 | Purchase MRI equipment |  | 7d | 2028-06-13 A | 2028-06-21 A | 2 | 100% | 2028-06-13 | 2028-06-19 | 5d |  | Hospital procurement | 56h | 56h | 7,000 | 5,000 | 7,000 |
| 4 | 1.3 | Receive equipment |  | 1d | 2028-06-21 A | 2028-06-22 A | 3 | 100% | 2028-06-20 | 2028-06-20 | 1d |  | Logistics | 8h | 8h |  |  |  |
| 5 | 1.4 | Inspect equipment |  | 3d | 2028-06-23 A | 2028-06-29 A | 4 | 100% | 2028-06-21 | 2028-06-23 | 1d |  | Lead physician; MRI vendor | 48h | 48h | 4,800 | 1,600 | 4,800 |
| 6 | 1.5 | Procurement complete | milestone | 0d | 2028-06-29 A | 2028-06-29 A | 5 | 100% | 2028-06-23 | 2028-06-23 | 0d |  |  |  |  |  |  |  |
| 7 | 2 | **Prepare room for renovation** |  | 6.75d | 2028-06-22 A | 2028-06-30 A |  | 100% | 2028-06-20 | 2028-06-27 | 6d |  |  | 26h | 26h | 3,400 | 3,800 | 2,400 |
| 8 | 2.1 | Update Power |  | 2.5d | 2028-06-22 A | 2028-06-26 A | 3 | 100% | 2028-06-20 | 2028-06-22 | 3d |  | Construction team; Cable [5 Each]; Permit [0.1%] | 20h | 20h | 3,400 | 3,800 | 2,400 |
| 9 | 2.2 | Install radiation barriers |  | 3d | 2028-06-27 A | 2028-06-29 A | 8 | 100% | 2028-06-23 | 2028-06-26 | 2d |  |  |  |  |  |  |  |
| 10 | 2.3 | Inspect renovation |  | 0.75d | 2028-06-30 A | 2028-06-30 A | 9 | 100% | 2028-06-27 | 2028-06-27 | 1d |  | Building inspector | 6h | 6h |  |  |  |
| 11 | 2.4 | Room prep complete | milestone | 0d | 2028-06-30 A | 2028-06-30 A | 9, 10 | 100% | 2028-06-27 | 2028-06-27 | 0d |  |  |  |  |  |  |  |
| 12 | 3 | **Renovation** |  | 8d | 2028-06-30 | 2028-07-14 |  |  | 2028-06-28 | 2028-07-11 | 8d | 0d |  | 80h |  | 3,600 | 3,600 |  |
| 13 | 3.1 | Mark floors for equipment |  | 1d | 2028-06-30 | 2028-07-05 | 11 |  | 2028-06-28 | 2028-06-28 | 1d | 0d | Construction team; Lead technician; Logistics | 24h |  | 2,000 | 2,000 |  |
| 14 | 3.2 | Install MRI machine |  | 3d | 2028-07-05 | 2028-07-10 | 6, 13 |  | 2028-06-29 | 2028-07-05 | 3d | 0d | MRI vendor | 24h |  |  |  |  |
| 15 | 3.3 | Install other equipment |  | 2d | 2028-07-10 | 2028-07-12 | 14 |  | 2028-07-06 | 2028-07-07 | 2d | 0d | Construction team | 16h |  | 1,600 | 1,600 |  |
| 16 | 3.4 | Install new furniture |  | 2d | 2028-07-12 | 2028-07-14 | 15 |  | 2028-07-10 | 2028-07-11 | 2d | 0d | Logistics | 16h |  |  |  |  |
| 17 | 3.5 | Renovation complete | milestone | 0d | 2028-07-14 | 2028-07-14 | 16 |  | 2028-07-11 | 2028-07-11 | 0d | 0d |  |  |  |  |  |  |
| 18 | 4 | **Certification** |  | 24d | 2028-06-30 | 2028-08-07 |  |  | 2028-06-28 | 2028-08-02 | 24d | 0d |  | 272h |  | 22,800 | 22,800 |  |
| 19 | 4.1 | Schedule training |  | 5d | 2028-06-30 | 2028-07-13 | 11 |  | 2028-06-28 | 2028-07-10 | 5d | 7d | Lead technician | 40h |  | 6,000 | 6,000 |  |
| 20 | 4.2 | Conduct full test |  | 3d | 2028-07-14 | 2028-07-19 | 17 |  | 2028-07-12 | 2028-07-14 | 3d | 0d | Lead physician; MRI vendor | 48h |  | 4,800 | 4,800 |  |
| 21 | 4.3 | Adjust equipment |  | 3d | 2028-07-19 | 2028-07-24 | 20 |  | 2028-07-17 | 2028-07-19 | 3d | 0d | MRI vendor | 24h |  |  |  |  |
| 22 | 4.4 | Conduct training |  | 10d | 2028-07-24 | 2028-08-07 | 19, 21 |  | 2028-07-20 | 2028-08-02 | 10d | 0d | Lead technician; MRI vendor | 160h |  | 12,000 | 12,000 |  |
| 23 | 5 | Ready for final approval | milestone | 0d | 2028-08-07 | 2028-08-07 | 22 |  | 2028-08-02 | 2028-08-02 | 0d | 0d |  |  |  |  |  |  |
